# IST645F17A2BShahM

Schedule from MS Project, 2018-02-19 to 2019-01-10, 5 hours a day, costs in $.

## Calendars

- Standard: Mon-Fri 08:00-12:00, 13:00-17:00; Sat-Sun off. Exceptions (off unless hours are given): 2017-11-23 to 2019-11-23 (Thanksgiving, recurring), 2017-12-25 to 2019-12-25 (Christmas, recurring), 2018-01-01 to 2020-01-01 (New Years, recurring).

## Resources

| Resource | Rate |
| --- | --- |
| Manan Shah | 35 |
| Nicole Morgante | 45 |
| Carlos Morales | 50 |
| Anthony Sardina | 40 |
| Peter Sheehan | 35 |
| Noelle Skube |  |
| Panita Wichiankuer | 45 |
| Huey-Ling Wang | 40 |
| Dr. Ulrich Naher |  |
| Kevin Barnett |  |
| Edward Burns |  |
| James K. Christenson | 31 |
| Phillip Snyder | 26 |
| Hal Lawton |  |
| Yasir Anwar |  |
| Jeff Cantor |  |
| Roberta Palmer |  |
| Payment after design of PoS Interface and Mobile App Interface | 25000 |
| Payment after successful off-site User Acceptance Test of PoS Interface System | 10000 |
| Payment after successful User Acceptance Test of Enhanced Mobile App Interface | 20000 |
| Payment after completed installation of 8 D-N working Self-Checkout system in stores | 24000 |
| Payment after successful Production-simulation User-Acceptance sign-off | 50000 |
| Payment initially due upon contract signing | 15000 |

## Schedule

| ID | WBS | Task | Type | Duration | Start | Finish | Predecessors | Total slack | Resources | Work | Cost |
| --- | --- | --- | --- | --- | --- | --- | --- | --- | --- | --- | --- |
| 1 | 1 | **Initial Project Planning** |  | 33d | 2018-02-19 | 2018-03-19 |  | 0d |  | 455h | 8,675 |
| 2 | 1.1 | Project initiation kick-off meeting |  | 1d | 2018-02-19 | 2018-02-19 |  | 0d | Anthony Sardina; Carlos Morales; Dr. Ulrich Naher; Edward Burns; Hal Lawton; Huey-Ling Wang; Jeff Cantor; Kevin Barnett; Manan Shah; Nicole Morgante; Noelle Skube; Panita Wichiankuer; Peter Sheehan; Roberta Palmer; Yasir Anwar | 75h | 1,450 |
| 3 | 1.2 | Meeting with stakeholders, IT project team |  | 2d | 2018-02-19 | 2018-02-21 | 2 | 0d | Dr. Ulrich Naher; Hal Lawton; Jeff Cantor; Manan Shah; Roberta Palmer; Yasir Anwar | 60h | 350 |
| 4 | 1.3 | Meeting with executive team to discuss project charter and scope |  | 2d | 2018-02-21 | 2018-02-22 | 3 | 0d | Hal Lawton; Jeff Cantor; Manan Shah; Yasir Anwar | 40h | 350 |
| 5 | 1.4 | Developing project charter and scope document |  | 7d | 2018-02-22 | 2018-02-28 | 3, 4 | 0d | Manan Shah | 35h | 1,225 |
| 6 | 1.5 | Review of project charter |  | 3d | 2018-02-28 | 2018-03-02 | 5 | 0d | Yasir Anwar | 15h |  |
| 7 | 1.6 | Approval of project charter |  | 2d | 2018-03-02 | 2018-03-05 | 6 | 0d | Dr. Ulrich Naher; Hal Lawton; Jeff Cantor; Manan Shah; Roberta Palmer; Yasir Anwar | 60h | 350 |
| 8 | 1.7 | Develop project summary document |  | 5d | 2018-03-05 | 2018-03-08 | 7, 5, 6 | 0d | Manan Shah | 25h | 875 |
| 9 | 1.8 | Present summary document to Macy's Board of Directors |  | 1d | 2018-03-09 | 2018-03-09 | 8 | 0d | Hal Lawton; Jeff Cantor; Manan Shah; Yasir Anwar | 20h | 175 |
| 10 | 1.9 | Present summary document to IT executives |  | 1d | 2018-03-09 | 2018-03-12 | 8, 9 | 0d | Anthony Sardina; Carlos Morales; Huey-Ling Wang; Manan Shah; Noelle Skube; Panita Wichiankuer; Peter Sheehan | 35h | 1,225 |
| 11 | 1.10 | Present summary document to store management |  | 1d | 2018-03-12 | 2018-03-12 | 8, 9, 10 | 0d | Manan Shah; Roberta Palmer | 10h | 175 |
| 12 | 1.11 | Team meeting for further planning |  | 1d | 2018-03-12 | 2018-03-13 | 11 | 0d | Anthony Sardina; Carlos Morales; Huey-Ling Wang; Manan Shah; Nicole Morgante; Noelle Skube; Panita Wichiankuer; Peter Sheehan | 40h | 1,450 |
| 13 | 1.12 | Develop preliminary WBS |  | 5d | 2018-03-13 | 2018-03-16 | 12 | 0d | Manan Shah | 25h | 875 |
| 14 | 1.13 | Present preliminary WBS to Yasir Anwar |  | 1d | 2018-03-16 | 2018-03-19 | 13 | 0d | Manan Shah; Yasir Anwar | 10h | 175 |
| 15 | 1.14 | Approval of WBS from Yasir Anwar |  | 1d | 2018-03-19 | 2018-03-19 | 13, 14 | 0d | Yasir Anwar | 5h |  |
| 16 | 2 | **Contract Signing with D-N** |  | 8d | 2018-03-19 | 2018-03-26 |  | 0d |  | 100h | 15,875 |
| 17 | 2.1 | Draft contract document for Macy's and D-N |  | 5d | 2018-03-19 | 2018-03-22 | 15 | 0d | Dr. Ulrich Naher; Manan Shah; Yasir Anwar | 75h | 875 |
| 18 | 2.2 | Contract approval by executives |  | 1d | 2018-03-23 | 2018-03-23 | 17 | 0d | Hal Lawton; Yasir Anwar | 10h |  |
| 19 | 2.3 | Contract signing by Macy's |  | 1d | 2018-03-23 | 2018-03-26 | 18 | 0d | Yasir Anwar; Hal Lawton | 10h |  |
| 20 | 2.4 | Contract review and signing by D-N |  | 1d | 2018-03-26 | 2018-03-26 | 19, 18 | 0d | Dr. Ulrich Naher | 5h |  |
| 21 | 2.5 | Initial payment to D-N | milestone | 0d | 2018-03-26 | 2018-03-26 | 20 | 0d | Payment initially due upon contract signing |  | 15,000 |
| 22 | 3 | **Detailed Design with D-N** |  | 21d | 2018-03-26 | 2018-04-12 |  | 0d |  | 395h | 9,500 |
| 23 | 3.1 | Project team meeting |  | 1d | 2018-03-26 | 2018-03-27 | 21 | 0d | Anthony Sardina; Carlos Morales; Edward Burns; Huey-Ling Wang; Kevin Barnett; Manan Shah; Nicole Morgante; Noelle Skube; Panita Wichiankuer; Peter Sheehan | 50h | 1,450 |
| 24 | 3.2 | Identifying deliverables |  | 3d | 2018-03-27 | 2018-03-29 | 23 | 0d | Edward Burns; Kevin Barnett; Manan Shah; Yasir Anwar | 60h | 525 |
| 25 | 3.3 | Preparing project design document |  | 7d | 2018-03-29 | 2018-04-04 | 24 | 0d | Carlos Morales; Manan Shah; Nicole Morgante; Peter Sheehan; Yasir Anwar | 175h | 5,775 |
| 26 | 3.4 | Assigning tasks to IT team |  | 2d | 2018-04-04 | 2018-04-05 | 25 | 0d | Manan Shah | 10h | 350 |
| 27 | 3.5 | Design of project with D-N team |  | 3d | 2018-04-06 | 2018-04-09 | 26 | 0d | Dr. Ulrich Naher; Edward Burns; Kevin Barnett; Manan Shah; Yasir Anwar | 75h | 525 |
| 28 | 3.6 | Create project flowchart |  | 5d | 2018-04-09 | 2018-04-12 | 25, 27 | 0d | Manan Shah | 25h | 875 |

| ID | WBS | Task | Duration | Start | Finish | Predecessors | Total slack | Free slack | Resources | Work | Cost |
| --- | --- | --- | --- | --- | --- | --- | --- | --- | --- | --- | --- |
| 29 | 4 | **Final Project Planning** | 20d | 2018-04-13 | 2018-05-01 |  | 0d |  |  | 180h | 2,975 |
| 30 | 4.1 | Present design report to Yasir Anwar | 1d | 2018-04-13 | 2018-04-13 | 25, 26, 27, 28 | 0d |  | Manan Shah; Yasir Anwar | 10h | 175 |
| 31 | 4.2 | Initial design review | 3d | 2018-04-13 | 2018-04-17 | 30 | 0d |  | Yasir Anwar | 15h |  |
| 32 | 4.3 | Prepare final design and workflow of project | 7d | 2018-04-17 | 2018-04-23 | 31 | 0d |  | Manan Shah | 35h | 1,225 |
| 33 | 4.4 | Prepare project feasibility report | 5d | 2018-04-23 | 2018-04-26 | 30, 31, 32 | 0d |  | Edward Burns; Manan Shah | 50h | 875 |
| 34 | 4.5 | Discuss feasibility report with D-N | 2d | 2018-04-27 | 2018-04-30 | 33 | 0d |  | Dr. Ulrich Naher; Edward Burns; Manan Shah | 30h | 350 |
| 35 | 4.6 | Approval of feasibility report and final design | 2d | 2018-04-30 | 2018-05-01 | 33, 34 | 0d |  | Dr. Ulrich Naher; Hal Lawton; Manan Shah; Yasir Anwar | 40h | 350 |
| 36 | 5 | **Project Development** | 103d | 2018-05-01 | 2018-07-30 |  | 0d |  |  | 2435h | 93,075 |
| 37 | 5.1 | Identifying development methods for deliverables | 7d | 2018-05-01 | 2018-05-07 | 35 | 0d |  | Carlos Morales; Manan Shah; Nicole Morgante; Noelle Skube; Peter Sheehan | 175h | 5,775 |
| 38 | 5.2 | Team meeting for discussing flow of development | 3d | 2018-05-07 | 2018-05-09 | 37 | 0d |  | Anthony Sardina; Carlos Morales; Edward Burns; Huey-Ling Wang; Kevin Barnett; Manan Shah; Nicole Morgante; Noelle Skube; Panita Wichiankuer; Peter Sheehan | 150h | 4,350 |
| 39 | 5.3 | Assigning team members for development of deliverables | 2d | 2018-05-09 | 2018-05-10 | 38 | 0d |  | Manan Shah | 10h | 350 |
| 40 | 5.4 | **Integration of TP.Net with PoS System** | 42d | 2018-05-11 | 2018-06-18 |  | 0d |  |  | 930h | 19,100 |
| 41 | 5.4.1 | Obtain TP.Net application suite from D-N | 2d | 2018-05-11 | 2018-05-14 | 39 | 0d |  | Dr. Ulrich Naher; Edward Burns; Kevin Barnett; Manan Shah; Yasir Anwar | 50h | 350 |
| 42 | 5.4.2 | Integrate TP.Net with existing inventory system | 12d | 2018-05-14 | 2018-05-23 | 41 | 0d |  | Carlos Morales; Edward Burns; Kevin Barnett; Manan Shah; Nicole Morgante; Noelle Skube | 360h | 7,800 |
| 43 | 5.4.3 | Integrate TP.Net with existing PoS system | 12d | 2018-05-23 | 2018-06-04 | 41, 42 | 0d |  | Carlos Morales; Edward Burns; Kevin Barnett; Manan Shah; Nicole Morgante; Noelle Skube | 360h | 7,800 |
| 44 | 5.4.4 | Unit test TP.Net and inventory system | 7d | 2018-06-04 | 2018-06-08 | 43 | 0d |  | Edward Burns; Huey-Ling Wang | 70h | 1,400 |
| 45 | 5.4.5 | Unit test TP.Net and PoS system | 7d | 2018-06-08 | 2018-06-14 | 44 | 0d |  | Edward Burns; Huey-Ling Wang | 70h | 1,400 |
| 46 | 5.4.6 | Meeting with inventory and sales department, store manager | 2d | 2018-06-15 | 2018-06-18 | 44, 45 | 0d |  | Manan Shah; Roberta Palmer | 20h | 350 |
| 47 | 5.5 | **Development of Dashboards** | 29d | 2018-05-11 | 2018-06-06 |  | 55d |  |  | 480h | 15,875 |
| 48 | 5.5.1 | Survey of access levels for Macy's management | 5d | 2018-05-11 | 2018-05-16 | 39 | 55d | 0d | Manan Shah; Yasir Anwar | 50h | 875 |
| 49 | 5.5.2 | Identifying type of dashboards for each user | 3d | 2018-05-16 | 2018-05-17 | 48 | 55d | 0d | Carlos Morales; Manan Shah; Nicole Morgante; Noelle Skube | 60h | 1,950 |
| 50 | 5.5.3 | **Programming Required Dashboards** | 19d | 2018-05-18 | 2018-06-04 |  | 55d |  |  | 350h | 12,700 |
| 51 | 5.5.3.1 | Develop key performance indicators | 5d | 2018-05-18 | 2018-05-23 | 49 | 261d |  | Anthony Sardina; Kevin Barnett; Manan Shah; Panita Wichiankuer | 100h | 3,000 |
| 52 | 5.5.3.2 | Design dashboards | 12d | 2018-05-18 | 2018-05-29 | 49 | 55d | 0d | Manan Shah; Nicole Morgante; Peter Sheehan | 180h | 6,900 |
| 53 | 5.5.3.3 | Integrate key performance indicators with dashboards | 7d | 2018-05-29 | 2018-06-04 | 49, 52 | 55d | 0d | Nicole Morgante; Peter Sheehan | 70h | 2,800 |
| 54 | 5.5.4 | Approval of dashboard design from Yasir Anwar | 2d | 2018-06-04 | 2018-06-06 | 52, 53 | 55d | 0d | Manan Shah; Yasir Anwar | 20h | 350 |

| ID | WBS | Task | Type | Duration | Start | Finish | Predecessors | Total slack | Free slack | Resources | Work | Cost |
| --- | --- | --- | --- | --- | --- | --- | --- | --- | --- | --- | --- | --- |
| 55 | 5.6 | **Modification of Macy's Mobile App** |  | 42d | 2018-06-18 | 2018-07-24 |  | 0d |  |  | 470h | 14,350 |
| 56 | 5.6.1 | Create mobile interface design for new app |  | 20d | 2018-06-18 | 2018-07-04 | 44, 45, 46 | 0d |  | Nicole Morgante; Peter Sheehan | 200h | 8,000 |
| 57 | 5.6.2 | Integrate mobile interface with new system |  | 10d | 2018-07-04 | 2018-07-12 | 56 | 0d |  | Edward Burns; Nicole Morgante; Peter Sheehan | 150h | 4,000 |
| 58 | 5.6.3 | Perform integration testing of mobile app and new system |  | 10d | 2018-07-13 | 2018-07-23 | 56, 57 | 0d |  | Edward Burns; Huey-Ling Wang | 100h | 2,000 |
| 59 | 5.6.4 | Approval of mobile interface by Yasir Anwar |  | 2d | 2018-07-23 | 2018-07-24 | 58 | 0d |  | Manan Shah; Yasir Anwar | 20h | 350 |
| 60 | 5.7 | Next payment to D-N | milestone | 0d | 2018-07-24 | 2018-07-24 | 57, 58, 59 | 190d |  | Payment after design of PoS Interface and Mobile App Interface |  | 25,000 |
| 61 | 5.8 | **Establishing Trend Reporting System** |  | 17d | 2018-05-11 | 2018-05-25 |  | 67d |  |  | 185h | 7,050 |
| 62 | 5.8.1 | Identifying trends using data mining techniques |  | 7d | 2018-05-11 | 2018-05-17 | 39 | 67d | 0d | Anthony Sardina; Panita Wichiankuer | 70h | 2,975 |
| 63 | 5.8.2 | Programming trend report interface |  | 7d | 2018-05-17 | 2018-05-23 | 62 | 67d | 0d | Nicole Morgante; Peter Sheehan | 70h | 2,800 |
| 64 | 5.8.3 | Review correctness of reported trends |  | 3d | 2018-05-23 | 2018-05-25 | 62, 63 | 67d | 0d | Anthony Sardina; Panita Wichiankuer; Yasir Anwar | 45h | 1,275 |
| 65 | 5.9 | Preparing final development documentation |  | 7d | 2018-07-24 | 2018-07-30 | 44, 45, 54, 59, 64 | 0d |  | Manan Shah | 35h | 1,225 |
| 66 | 6 | **Testing of Deliverables** |  | 180d | 2018-05-25 | 2018-10-31 |  | 74d |  |  | 1845h | 102,575 |
| 67 | 6.1 | Identifying testing methods for each deliverable |  | 7d | 2018-07-30 | 2018-08-06 | 65 | 0d |  | Huey-Ling Wang; Manan Shah | 70h | 2,625 |
| 68 | 6.2 | **Testing of TP.Net and PoS System** |  | 53d | 2018-08-06 | 2018-09-20 |  | 0d |  |  | 490h | 24,075 |
| 69 | 6.2.1 | Developing test cases |  | 5d | 2018-08-06 | 2018-08-09 | 67 | 0d |  | Huey-Ling Wang; Nicole Morgante | 50h | 2,125 |
| 70 | 6.2.2 | Performing system testing for correct working |  | 5d | 2018-08-09 | 2018-08-14 | 69 | 0d |  | Edward Burns; Huey-Ling Wang | 50h | 1,000 |
| 71 | 6.2.3 | Performing integration testing for TP.Net and Inventory system |  | 5d | 2018-08-16 | 2018-08-21 | 69, 70FS+3d | 0d |  | Edward Burns; Huey-Ling Wang | 50h | 1,000 |
| 72 | 6.2.4 | Performing integration testing for TP.Net and PoS system |  | 5d | 2018-08-23 | 2018-08-28 | 69, 71FS+3d | 0d |  | Edward Burns; Huey-Ling Wang | 50h | 1,000 |
| 73 | 6.2.5 | Performing system testing for mobile interface |  | 5d | 2018-08-30 | 2018-09-04 | 69, 72FS+3d | 0d |  | Edward Burns; Huey-Ling Wang | 50h | 1,000 |
| 74 | 6.2.6 | PoS system off-site user acceptance testing |  | 5d | 2018-09-04 | 2018-09-07 | 71, 72, 73 | 0d |  | Edward Burns; Huey-Ling Wang; Manan Shah | 75h | 1,875 |
| 75 | 6.2.7 | Identifying bugs and reporting them |  | 5d | 2018-09-07 | 2018-09-12 | 74 | 0d |  | Huey-Ling Wang; Manan Shah | 50h | 1,875 |
| 76 | 6.2.8 | Fixing identified errors |  | 7d | 2018-09-12 | 2018-09-19 | 75 | 0d |  | Huey-Ling Wang; Nicole Morgante; Peter Sheehan | 105h | 4,200 |
| 77 | 6.2.9 | Final approval of deliverable |  | 2d | 2018-09-19 | 2018-09-20 | 76 | 0d |  | Yasir Anwar | 10h |  |
| 78 | 6.2.10 | Next payment to D-N | milestone | 0d | 2018-09-20 | 2018-09-20 | 77 | 0d |  | Payment after successful off-site User Acceptance Test of PoS Interface System |  | 10,000 |

| ID | WBS | Task | Type | Duration | Start | Finish | Predecessors | Total slack | Free slack | Resources | Work | Cost |
| --- | --- | --- | --- | --- | --- | --- | --- | --- | --- | --- | --- | --- |
| 79 | 6.3 | **On-Site Testing of New System** |  | 17d | 2018-09-20 | 2018-10-04 |  | 0d |  |  | 700h | 41,250 |
| 80 | 6.3.1 | Finalize terminal locations in store |  | 3d | 2018-09-20 | 2018-09-24 | 78 | 2d |  | James K. Christenson; Manan Shah; Phillip Snyder; Roberta Palmer | 60h | 1,380 |
| 81 | 6.3.2 | Obtaining pre-installation report from D-N |  | 5d | 2018-09-20 | 2018-09-25 | 78 | 0d |  | James K. Christenson; Phillip Snyder | 50h | 1,425 |
| 82 | 6.3.3 | Installing 8 terminals in store |  | 5d | 2018-09-25 | 2018-09-28 | 80, 81 | 0d |  | James K. Christenson; Manan Shah; Phillip Snyder; Roberta Palmer | 100h | 2,300 |
| 83 | 6.3.4 | Performing alpha testing with IT team and executives |  | 7d | 2018-09-28 | 2018-10-04 | 82 | 0d |  | Anthony Sardina; Carlos Morales; Edward Burns; Huey-Ling Wang; James K. Christenson; Kevin Barnett; Manan Shah; Nicole Morgante; Noelle Skube; Panita Wichiankuer; Peter Sheehan; Phillip Snyder; Roberta Palmer; Yasir Anwar | 490h | 12,145 |
| 84 | 6.3.5 | Next payment to D-N | milestone | 0d | 2018-10-04 | 2018-10-04 | 83 | 0d |  | Payment after completed installation of 8 D-N working Self-Checkout system in stores |  | 24,000 |
| 85 | 6.4 | **Final Testing of New System** |  | 22d | 2018-10-05 | 2018-10-24 |  | 0d |  |  | 295h | 26,925 |
| 86 | 6.4.1 | Unit testing of each system at terminal |  | 7d | 2018-10-05 | 2018-10-11 | 82, 83, 84 | 0d |  | Edward Burns; Huey-Ling Wang | 70h | 1,400 |
| 87 | 6.4.2 | Integration testing of final system |  | 5d | 2018-10-11 | 2018-10-16 | 86 | 0d |  | Edward Burns; Huey-Ling Wang | 50h | 1,000 |
| 88 | 6.4.3 | Beta testing by customers |  | 5d | 2018-10-16 | 2018-10-19 | 87 | 0d |  | Edward Burns; Huey-Ling Wang; James K. Christenson; Manan Shah; Roberta Palmer | 125h | 2,650 |
| 89 | 6.4.4 | Next payment to D-N | milestone | 0d | 2018-10-19 | 2018-10-19 | 86, 87, 88 | 89d |  | Payment after successful User Acceptance Test of Enhanced Mobile App Interface |  | 20,000 |
| 90 | 6.4.5 | Developing final testing report |  | 5d | 2018-10-19 | 2018-10-24 | 88 | 0d |  | Huey-Ling Wang; Manan Shah | 50h | 1,875 |
| 91 | 6.5 | **Testing of Dashboards** |  | 22d | 2018-05-25 | 2018-06-14 |  | 151d |  |  | 220h | 6,475 |
| 92 | 6.5.1 | Developing test cases |  | 3d | 2018-06-06 | 2018-06-07 | 54 | 151d | 0d | Huey-Ling Wang; Manan Shah | 30h | 1,125 |
| 93 | 6.5.2 | Acceptance testing of dashboards |  | 5d | 2018-06-08 | 2018-06-13 | 92 | 151d | 0d | Huey-Ling Wang; Manan Shah; Yasir Anwar | 75h | 1,875 |
| 94 | 6.5.3 | Testing trend reports |  | 5d | 2018-05-25 | 2018-05-30 | 64 | 166d | 15d | Anthony Sardina; Huey-Ling Wang; Panita Wichiankuer | 75h | 3,125 |
| 95 | 6.5.4 | Final approval by management at headquarters |  | 2d | 2018-06-13 | 2018-06-14 | 94, 93 | 151d |  | Hal Lawton; Jeff Cantor; Manan Shah; Yasir Anwar | 40h | 350 |
| 96 | 6.6 | Development and approval of testing completion report |  | 7d | 2018-10-24 | 2018-10-31 | 77, 83, 90, 95 | 0d |  | Manan Shah; Yasir Anwar | 70h | 1,225 |
| 97 | 7 | **Training** |  | 48d | 2018-10-31 | 2018-12-13 |  | 0d |  |  | 520h | 15,575 |
| 98 | 7.1 | Create detailed application working documentation |  | 7d | 2018-10-31 | 2018-11-06 | 96 | 0d |  | Kevin Barnett; Manan Shah | 70h | 1,225 |
| 99 | 7.2 | Design graphical user manual |  | 7d | 2018-11-06 | 2018-11-12 | 96, 98 | 0d |  | Manan Shah; Nicole Morgante | 70h | 2,800 |
| 100 | 7.3 | Create user manuals for staff and customers |  | 7d | 2018-11-12 | 2018-11-19 | 99 | 0d |  | Manan Shah; Nicole Morgante | 70h | 2,800 |
| 101 | 7.4 | Develop on-site training plan |  | 5d | 2018-11-19 | 2018-11-22 | 98, 99, 100 | 0d |  | Manan Shah | 25h | 875 |
| 102 | 7.5 | Submit training proposal |  | 1d | 2018-11-22 | 2018-11-22 | 101 | 0d |  | Manan Shah | 5h | 175 |
| 103 | 7.6 | Approval of training proposal |  | 1d | 2018-11-26 | 2018-11-26 | 102 | 0d |  | Manan Shah; Yasir Anwar | 10h | 175 |
| 104 | 7.7 | Initializing training activities |  | 1d | 2018-11-26 | 2018-11-27 | 103 | 0d |  | Manan Shah | 5h | 175 |
| 105 | 7.8 | Training staff at stores for use of new system |  | 5d | 2018-11-27 | 2018-11-30 | 104 | 0d |  | Manan Shah; Roberta Palmer | 50h | 875 |
| 106 | 7.9 | Training executive management for use of dashboards |  | 5d | 2018-11-27 | 2018-11-30 | 104 | 0d |  | Manan Shah; Yasir Anwar | 50h | 875 |
| 107 | 7.10 | Issuing user manuals to customers online and on-site |  | 2d | 2018-11-30 | 2018-12-03 | 105, 106 | 0d |  | Manan Shah; Nicole Morgante | 20h | 800 |
| 108 | 7.11 | Obtaining feedback from all stakeholders |  | 5d | 2018-12-03 | 2018-12-06 | 105, 106, 107 | 0d |  | Manan Shah; Yasir Anwar; Panita Wichiankuer | 75h | 2,000 |
| 109 | 7.12 | Making changes as per feedback |  | 7d | 2018-12-06 | 2018-12-13 | 108 | 0d |  | Manan Shah; Nicole Morgante | 70h | 2,800 |

| ID | WBS | Task | Type | Duration | Start | Finish | Predecessors | Total slack | Resources | Work | Cost |
| --- | --- | --- | --- | --- | --- | --- | --- | --- | --- | --- | --- |
| 110 | 8 | **Project Close-Out** |  | 29d | 2018-12-13 | 2019-01-10 |  | 0d |  | 345h | 57,665 |
| 111 | 8.1 | Review prototype implementation at store |  | 3d | 2018-12-13 | 2018-12-14 | 109 | 0d | Edward Burns; James K. Christenson; Kevin Barnett; Manan Shah; Roberta Palmer; Yasir Anwar | 90h | 990 |
| 112 | 8.2 | Final payment to D-N | milestone | 0d | 2018-12-14 | 2018-12-14 | 111 | 0d | Payment after successful Production-simulation User-Acceptance sign-off |  | 50,000 |
| 113 | 8.3 | Identifying issues, if any |  | 5d | 2018-12-17 | 2018-12-20 | 111, 112 | 0d | Manan Shah | 25h | 875 |
| 114 | 8.4 | Final issue resolution |  | 5d | 2018-12-20 | 2018-12-26 | 113 | 0d | Huey-Ling Wang; Manan Shah; Nicole Morgante | 75h | 3,000 |
| 115 | 8.5 | Develop comprehensive project completion report |  | 5d | 2018-12-26 | 2018-12-31 | 114 | 0d | Manan Shah | 25h | 875 |
| 116 | 8.6 | Provide reports for business side of the project |  | 3d | 2018-12-31 | 2019-01-03 | 115 | 2d | Jeff Cantor; Manan Shah | 30h | 525 |
| 117 | 8.7 | Develop reports for future scope of the implementation of new system |  | 5d | 2018-12-31 | 2019-01-04 | 115 | 0d | Manan Shah | 25h | 875 |
| 118 | 8.8 | Review of final report by Yasir Anwar |  | 3d | 2019-01-04 | 2019-01-08 | 116, 117 | 0d | Manan Shah; Yasir Anwar | 30h | 525 |
| 119 | 8.9 | Approval of final report by Macy's executives |  | 3d | 2019-01-08 | 2019-01-10 | 118 | 0d | Hal Lawton; Jeff Cantor; Yasir Anwar | 45h |  |
